# Proget gantt chart

Schedule from MS Project, 2023-08-17 to 2024-08-30, costs in €.

## Calendars

- Standard: Mon-Fri 09:00-13:00, 14:00-18:00; Sat-Sun off.

## Resources

| Resource | Rate |
| --- | --- |
| Italian Specialized Engineer | 120 |
| Italian Project Engineer | 140 |
| Indian Specialized Engineer | 60 |
| Indian Project Engineer | 70 |
| Purchasing Agent | 70 |
| Indian Team of workers | 65 |
| Italian team of workers | 320 |
| Single-spindle CNC machine | 340000 |
| Double-spindle CNC machine | 500000 |
| Intermediate washing station | 530000 |
| Final washing station | 970000 |
| Drilling machine | 270000 |
| Assembly station | 1100000 |
| Manipulator | 11000 |
| Gantry loader (including robots) | 96000 |
| Rotating table | 250000 |
| Lift/lower component | 16000 |
| powered conveyor | 70200 |
| overhead conveyor | 16200 |
| Owner |  |
| Logistics Service Provider |  |
| Supplier |  |

## Schedule

| ID | WBS | Task | Duration | Start | Finish | Predecessors | Total slack | Free slack | Constraint | Resources | Work | Cost |
| --- | --- | --- | --- | --- | --- | --- | --- | --- | --- | --- | --- | --- |
| 1 | 1 | **Aluminum cylinder heads project** | 272d? | 2023-08-17 | 2024-08-30 |  | 0d |  |  |  | 4391.68h | 397,201.42 |
| 2 | 1.1 | **ENGINEERING PHASE** | 52d | 2023-08-17 | 2023-10-27 |  | 0d |  |  |  | 416.08h | 54,085.42 |
| 3 | 1.1.1 | Detailed Engineering - Process | 52d | 2023-08-17 | 2023-10-27 |  | 0d |  | start no earlier than 2023-08-17 | Italian Project Engineer [50%]; Italian Specialized Engineer [50%] | 416h | 54,080 |
| 4 | 1.1.2 | Detailed Engineering - Layout | 48d | 2023-08-23 | 2023-10-27 |  | 0d |  | start no earlier than 2023-08-23 | Indian Specialized Engineer [0%]; Indian Project Engineer [0%] | 0.08h | 5.42 |
| 5 | 1.2 | **Purchase Process** | 24d? | 2023-10-30 | 2023-11-30 | 2 | 0d |  |  |  | 1260h | 88,200 |
| 6 | 1.2.1 | **CNC machine (double and single spindle)** | 22d? | 2023-10-30 | 2023-11-28 |  | 88d |  |  | Purchasing Agent; Supplier [0.1%] | 200h | 14,000 |
| 7 | 1.2.1.1 | Request for proposals | 2.5d? | 2023-10-30 | 2023-11-01 |  | 93.5d | 0d |  | Purchasing Agent [40%] | 8h | 560 |
| 8 | 1.2.1.2 | Waiting Period | 10d | 2023-11-01 | 2023-11-15 | 7 | 93.5d | 0d |  | Supplier [0.1%] |  |  |
| 9 | 1.2.1.3 | Competitive proposal analysis | 2d? | 2023-11-15 | 2023-11-17 | 8 | 93.5d | 5.5d |  | Purchasing Agent [50%] | 8h | 560 |
| 10 | 1.2.1.4 | Orders | 2d? | 2023-11-27 | 2023-11-28 | 9 | 88d | 0d | start no earlier than 2023-11-27 | Purchasing Agent [50%] | 8h | 560 |
| 11 | 1.2.2 | **Washing station** | 22d | 2023-10-31 | 2023-11-29 |  |  |  |  | Purchasing Agent; Supplier [0.1%] | 228h | 15,960 |
| 12 | 1.2.2.1 | Request for proposals | 2.5d | 2023-10-30 | 2023-11-01 |  | 205.5d | 0d | start no earlier than 2023-10-30 | Purchasing Agent | 20h | 1,400 |
| 13 | 1.2.2.2 | Waiting Period | 10d | 2023-11-01 | 2023-11-15 | 12 | 205.5d | 0d |  | Supplier [0.1%] |  |  |
| 14 | 1.2.2.3 | Competitive proposal analysis | 2d | 2023-11-15 | 2023-11-17 | 13 | 205.5d |  |  | Purchasing Agent | 16h | 1,120 |
| 15 | 1.2.2.4 | Orders | 2d | 2023-11-27 | 2023-11-28 |  | 128d | 0d | start no earlier than 2023-11-27 | Purchasing Agent | 16h | 1,120 |
| 16 | 1.2.3 | **Drilling machine** | 20d? | 2023-11-01 | 2023-11-28 |  | 132d |  |  | Purchasing Agent; Supplier [0.1%] | 212h | 14,840 |
| 17 | 1.2.3.1 | Request for proposals | 2.5d? | 2023-11-01 | 2023-11-03 |  | 135.5d | 0d | start no earlier than 2023-11-01 | Purchasing Agent | 20h | 1,400 |
| 18 | 1.2.3.2 | Waiting Period | 10d | 2023-11-03 | 2023-11-17 | 17 | 135.5d | 0d |  | Supplier [0.1%] |  |  |
| 19 | 1.2.3.3 | Competitive proposal analysis | 2d? | 2023-11-17 | 2023-11-21 | 18 | 135.5d | 3.5d |  | Purchasing Agent | 16h | 1,120 |
| 20 | 1.2.3.4 | Orders | 2d? | 2023-11-27 | 2023-11-28 | 19 | 132d | 0d | start no earlier than 2023-11-27 | Purchasing Agent | 16h | 1,120 |
| 21 | 1.2.4 | **Assembly station** | 20d? | 2023-11-01 | 2023-11-28 |  | 116d |  |  | Purchasing Agent; Supplier [0.1%] | 212h | 14,840 |
| 22 | 1.2.4.1 | Request for proposals | 2.5d? | 2023-11-01 | 2023-11-03 |  | 203.5d | 0d | start no earlier than 2023-11-01 | Purchasing Agent | 20h | 1,400 |
| 23 | 1.2.4.2 | Waiting Period | 10d | 2023-11-03 | 2023-11-17 | 22 | 203.5d | 0d |  | Supplier [0.1%] |  |  |
| 24 | 1.2.4.3 | Competitive proposal analysis | 2d? | 2023-11-17 | 2023-11-21 | 23 | 203.5d |  |  | Purchasing Agent | 16h | 1,120 |
| 25 | 1.2.4.4 | Orders | 2d? | 2023-11-27 | 2023-11-28 |  | 98d | 0d | start no earlier than 2023-11-27 | Purchasing Agent | 16h | 1,120 |

| ID | WBS | Task | Duration | Start | Finish | Predecessors | Total slack | Free slack | Constraint | Resources | Work | Cost |
| --- | --- | --- | --- | --- | --- | --- | --- | --- | --- | --- | --- | --- |
| 26 | 1.2.5 | **Gantry loaders** | 19d? | 2023-11-06 | 2023-11-30 |  | 101d |  |  | Purchasing Agent; Supplier [0.1%] | 204h | 14,280 |
| 27 | 1.2.5.1 | Request for proposals | 2.5d? | 2023-11-06 | 2023-11-08 |  | 103.5d | 0d | start no earlier than 2023-11-06 | Purchasing Agent | 20h | 1,400 |
| 28 | 1.2.5.2 | Waiting Period | 10d | 2023-11-08 | 2023-11-22 | 27 | 103.5d | 0d |  | Supplier [0.1%] |  |  |
| 29 | 1.2.5.3 | Competitive proposal analysis | 2d? | 2023-11-22 | 2023-11-24 | 28 | 103.5d | 2.5d |  | Purchasing Agent | 16h | 1,120 |
| 30 | 1.2.5.4 | Orders | 2d | 2023-11-29 | 2023-11-30 | 29 | 101d | 0d | start no earlier than 2023-11-29 | Purchasing Agent | 16h | 1,120 |
| 31 | 1.2.6 | **Material handling equipments** | 19d? | 2023-11-06 | 2023-11-30 |  | 66d |  |  | Purchasing Agent; Supplier [0.1%] | 204h | 14,280 |
| 32 | 1.2.6.1 | Request for proposals | 2.5d? | 2023-11-06 | 2023-11-08 |  | 68.5d | 0d | start no earlier than 2023-11-06 | Purchasing Agent | 20h | 1,400 |
| 33 | 1.2.6.2 | Waiting Period | 10d | 2023-11-08 | 2023-11-22 | 32 | 68.5d | 0d |  | Supplier [0.1%] |  |  |
| 34 | 1.2.6.3 | Competitive proposal analysis | 2d? | 2023-11-22 | 2023-11-24 | 33 | 68.5d | 2.5d |  | Purchasing Agent | 16h | 1,120 |
| 35 | 1.2.6.4 | Orders | 2d? | 2023-11-29 | 2023-11-30 | 34 | 66d | 0d | start no earlier than 2023-11-29 | Purchasing Agent | 16h | 1,120 |
| 36 | 1.3 | **Equipment Manufacturing Phase** | 132d | 2023-11-29 | 2024-05-30 |  | 66d |  |  |  |  |  |
| 37 | 1.3.1 | CNC machine (double and single spindle) | 110d | 2023-11-29 | 2024-04-30 | 10 | 88d |  |  | Supplier [0.1%] |  |  |
| 38 | 1.3.2 | Washing station | 70d | 2023-11-29 | 2024-03-05 | 15 | 128d |  |  | Supplier [0.1%] |  |  |
| 39 | 1.3.3 | Drilling machine | 66d | 2023-11-29 | 2024-02-28 | 20 | 132d |  |  | Supplier [0.1%] |  |  |
| 40 | 1.3.4 | Assembly Station | 100d | 2023-11-29 | 2024-04-16 | 25 | 98d |  |  | Supplier [0.1%] |  |  |
| 41 | 1.3.5 | Gantry loaders | 95d | 2023-12-01 | 2024-04-11 | 30 | 101d |  |  | Supplier [0.1%] |  |  |
| 42 | 1.3.6 | Material handling equipments | 130d | 2023-12-01 | 2024-05-30 | 35 | 66d |  | start no earlier than 2023-11-27 | Supplier [0.1%] |  |  |
| 43 | 1.4 | Transportation phase | 1d? | 2023-11-27 | 2023-11-27 |  | 199d |  | start no earlier than 2023-11-27 |  |  |  |
| 44 | 1.5 | **Civil works refurbishment erection phase** | 220d? | 2023-10-30 | 2024-08-30 |  | 0d |  |  |  | 2715.2h | 254,824 |
| 45 | 1.5.1 | Design Civil Works | 55d | 2023-10-30 | 2024-01-12 |  | 165d |  |  |  |  |  |
| 46 | 1.5.2 | Permits and Authorizations | 30d | 2023-10-30 | 2023-12-08 |  | 190d |  |  |  |  |  |
| 47 | 1.5.3 | Site Installation | 15d | 2023-10-30 | 2023-11-17 |  | 205d |  |  |  |  |  |
| 48 | 1.5.4 | Excavations & Foundations | 30d | 2023-10-30 | 2023-12-08 |  | 190d |  |  |  |  |  |
| 49 | 1.5.5 | Structural Improvement | 35d | 2023-10-30 | 2023-12-15 |  | 185d |  |  |  |  |  |
| 50 | 1.5.6 | Industrial Flooring | 35d | 2023-10-30 | 2023-12-15 |  | 185d |  |  |  |  |  |
| 51 | 1.5.7 | Finishes | 38d | 2023-10-30 | 2023-12-20 |  | 182d |  |  |  |  |  |

| ID | WBS | Task | Duration | Start | Finish | Total slack | Resources | Work | Cost |
| --- | --- | --- | --- | --- | --- | --- | --- | --- | --- |
| 52 | 1.5.8 | **On site erection phase** | 220d? | 2023-10-30 | 2024-08-30 |  |  | 2715.2h | 254,824 |
| 53 | 1.5.8.1 | **OP10** | 30d? | 2023-10-30 | 2023-12-08 | 190d |  | 16.4h | 3,208 |
| 54 | 1.5.8.1.1 | Mechanical Installation | 30d? | 2023-10-30 | 2023-12-08 | 190d | Indian Team of workers [3.3%] | 8h | 520 |
| 55 | 1.5.8.1.2 | Connections | 3.4d? | 2023-10-30 | 2023-11-02 | 216.6d | Italian team of workers [29.4%] | 8h | 2,560 |
| 56 | 1.5.8.1.3 | Final Assembly | 6.7d? | 2023-10-30 | 2023-11-07 | 213.3d | Italian team of workers [0.7%] | 0.4h | 128 |
| 57 | 1.5.8.2 | **OP20** | 30d? | 2023-10-30 | 2023-12-08 | 190d |  | 269.88h | 25,161.6 |
| 58 | 1.5.8.2.1 | Mechanical Installation | 30d? | 2023-10-30 | 2023-12-08 | 190d | Indian Team of workers | 240h | 15,600 |
| 59 | 1.5.8.2.2 | Connections | 3.4d? | 2023-10-30 | 2023-11-02 | 216.6d | Italian team of workers | 27.2h | 8,704 |
| 60 | 1.5.8.2.3 | Final Assembly | 6.7d? | 2023-10-30 | 2023-11-07 | 213.3d | Italian team of workers [5%] | 2.68h | 857.6 |
| 61 | 1.5.8.3 | **OP30** | 30d? | 2023-10-30 | 2023-12-08 | 190d |  | 269.88h | 25,161.6 |
| 62 | 1.5.8.3.1 | Mechanical Installation | 30d? | 2023-10-30 | 2023-12-08 | 190d | Indian Team of workers | 240h | 15,600 |
| 63 | 1.5.8.3.2 | Connections | 3.4d? | 2023-10-30 | 2023-11-02 | 216.6d | Italian team of workers | 27.2h | 8,704 |
| 64 | 1.5.8.3.3 | Final Assembly | 6.7d? | 2023-10-30 | 2023-11-07 | 213.3d | Italian team of workers [5%] | 2.68h | 857.6 |
| 65 | 1.5.8.4 | **OP40** | 30d? | 2023-10-30 | 2023-12-08 | 190d |  | 269.88h | 25,161.6 |
| 66 | 1.5.8.4.1 | Mechanical Installation | 30d? | 2023-10-30 | 2023-12-08 | 190d | Indian Team of workers | 240h | 15,600 |
| 67 | 1.5.8.4.2 | Connections | 3.4d? | 2023-10-30 | 2023-11-02 | 216.6d | Italian team of workers | 27.2h | 8,704 |
| 68 | 1.5.8.4.3 | Final Assembly | 6.7d? | 2023-10-30 | 2023-11-07 | 213.3d | Italian team of workers [5%] | 2.68h | 857.6 |
| 69 | 1.5.8.5 | **OP50** | 30d? | 2023-10-30 | 2023-12-08 | 190d |  | 269.88h | 25,161.6 |
| 70 | 1.5.8.5.1 | Mechanical Installation | 30d? | 2023-10-30 | 2023-12-08 | 190d | Indian Team of workers | 240h | 15,600 |
| 71 | 1.5.8.5.2 | Connections | 3.4d? | 2023-10-30 | 2023-11-02 | 216.6d | Italian team of workers | 27.2h | 8,704 |
| 72 | 1.5.8.5.3 | Final Assembly | 6.7d? | 2023-10-30 | 2023-11-07 | 213.3d | Italian team of workers [5%] | 2.68h | 857.6 |
| 73 | 1.5.8.6 | **OP60** | 30d? | 2023-10-30 | 2023-12-08 | 190d |  | 269.88h | 25,161.6 |
| 74 | 1.5.8.6.1 | Mechanical Installation | 30d? | 2023-10-30 | 2023-12-08 | 190d | Indian Team of workers | 240h | 15,600 |
| 75 | 1.5.8.6.2 | Connections | 3.4d? | 2023-10-30 | 2023-11-02 | 216.6d | Italian team of workers | 27.2h | 8,704 |
| 76 | 1.5.8.6.3 | Final Assembly | 6.7d? | 2023-10-30 | 2023-11-07 | 213.3d | Italian team of workers [5%] | 2.68h | 857.6 |

| ID | WBS | Task | Duration | Start | Finish | Total slack | Resources | Work | Cost |
| --- | --- | --- | --- | --- | --- | --- | --- | --- | --- |
| 77 | 1.5.8.7 | **OP70** | 30d? | 2023-10-30 | 2023-12-08 | 190d |  | 269.88h | 25,161.6 |
| 78 | 1.5.8.7.1 | Mechanical Installation | 30d? | 2023-10-30 | 2023-12-08 | 190d | Indian Team of workers | 240h | 15,600 |
| 79 | 1.5.8.7.2 | Connections | 3.4d? | 2023-10-30 | 2023-11-02 | 216.6d | Italian team of workers | 27.2h | 8,704 |
| 80 | 1.5.8.7.3 | Final Assembly | 6.7d? | 2023-10-30 | 2023-11-07 | 213.3d | Italian team of workers [5%] | 2.68h | 857.6 |
| 81 | 1.5.8.8 | **OP80** | 30d? | 2023-10-30 | 2023-12-08 | 190d |  | 269.88h | 25,161.6 |
| 82 | 1.5.8.8.1 | Mechanical Installation | 30d? | 2023-10-30 | 2023-12-08 | 190d | Indian Team of workers | 240h | 15,600 |
| 83 | 1.5.8.8.2 | Connections | 3.4d? | 2023-10-30 | 2023-11-02 | 216.6d | Italian team of workers | 27.2h | 8,704 |
| 84 | 1.5.8.8.3 | Final Assembly | 6.7d? | 2023-10-30 | 2023-11-07 | 213.3d | Italian team of workers [5%] | 2.68h | 857.6 |
| 85 | 1.5.8.9 | **OP90** | 30d? | 2023-10-30 | 2023-12-08 | 190d |  | 269.88h | 25,161.6 |
| 86 | 1.5.8.9.1 | Mechanical Installation | 30d? | 2023-10-30 | 2023-12-08 | 190d | Indian Team of workers | 240h | 15,600 |
| 87 | 1.5.8.9.2 | Connections | 3.4d? | 2023-10-30 | 2023-11-02 | 216.6d | Italian team of workers | 27.2h | 8,704 |
| 88 | 1.5.8.9.3 | Final Assembly | 6.7d? | 2023-10-30 | 2023-11-07 | 213.3d | Italian team of workers [5%] | 2.68h | 857.6 |
| 89 | 1.5.8.10 | **OP100** | 30d? | 2023-10-30 | 2023-12-08 | 190d |  | 269.88h | 25,161.6 |
| 90 | 1.5.8.10.1 | Mechanical Installation | 30d? | 2023-10-30 | 2023-12-08 | 190d | Indian Team of workers | 240h | 15,600 |
| 91 | 1.5.8.10.2 | Connections | 3.4d? | 2023-10-30 | 2023-11-02 | 216.6d | Italian team of workers | 27.2h | 8,704 |
| 92 | 1.5.8.10.3 | Final Assembly | 6.7d? | 2023-10-30 | 2023-11-07 | 213.3d | Italian team of workers [5%] | 2.68h | 857.6 |
| 93 | 1.5.8.11 | **OP110** | 30d? | 2023-10-30 | 2023-12-08 | 190d |  | 269.88h | 25,161.6 |
| 94 | 1.5.8.11.1 | Mechanical Installation | 30d? | 2023-10-30 | 2023-12-08 | 190d | Indian Team of workers | 240h | 15,600 |
| 95 | 1.5.8.11.2 | Connections | 3.4d? | 2023-10-30 | 2023-11-02 | 216.6d | Italian team of workers | 27.2h | 8,704 |
| 96 | 1.5.8.11.3 | Final Assembly | 6.7d? | 2023-10-30 | 2023-11-07 | 213.3d | Italian team of workers [5%] | 2.68h | 857.6 |
| 97 | 1.6 | Final line testing | 30d? | 2023-10-30 | 2023-12-08 | 190d | Italian Project Engineer [0.1%]; Italian team of workers [0.1%] | 0.4h | 92 |
